# russiancinema.ru_planning

Schedule from MS Project, 2011-10-03 to 2012-01-27, costs in р., A marks actual dates.
Alcatel-Lucent

## Calendars

- Standard: Mon-Fri 08:00-12:00, 13:00-17:00; Sat-Sun off.

## Resources

| Resource | Rate |
| --- | --- |
| Стас | 240 |
| Илья |  |

## Schedule

| ID | WBS | Task | Type | Duration | Start | Finish | Predecessors | Complete | Remaining | Total slack | Free slack | Constraint | Deadline | Resources | Work | Actual work | Cost | Actual cost |
| --- | --- | --- | --- | --- | --- | --- | --- | --- | --- | --- | --- | --- | --- | --- | --- | --- | --- | --- |
| 1 | 1 | **russiancinema.ru** |  | 85d | 2011-10-03 08:00 A | 2012-01-27 17:00 |  | 3% | 82.51d | 0d |  |  |  |  | 660h | 20h | 96,960 | 4,800 |
| 2 | 1.1 | **milestones** |  | 42d | 2011-10-04 08:00 A | 2011-12-01 08:00 |  |  | 42d | 42d |  |  |  |  |  |  |  |  |
| 3 | 1.1.1 | старт проекта | milestone | 0d | 2011-10-04 08:00 A | 2011-10-04 08:00 A |  | 100% |  |  |  | must start on 2011-10-04 08:00 |  |  |  |  |  |  |
| 4 | 1.1.2 | готово новое окружение | milestone | 0d | 2011-10-04 17:00 A | 2011-10-04 17:00 A | 19 | 100% |  |  |  |  |  |  |  |  |  |  |
| 5 | 1.1.3 | готова таблица статуса контента | milestone | 0d | 2011-10-17 17:00 | 2011-10-17 17:00 | 22 |  |  | 74d |  |  |  |  |  |  |  |  |
| 6 | 1.1.4 | готовы Списки “Фильмы” и “ Персоналии” | milestone | 0d | 2011-10-21 17:00 | 2011-10-21 17:00 | 23 |  |  | 70d |  |  |  |  |  |  |  |  |
| 7 | 1.1.5 | готова Страница “Фильмы >> Персоны” | milestone | 0d | 2011-10-28 17:00 | 2011-10-28 17:00 | 27 |  |  | 65d |  |  |  |  |  |  |  |  |
| 8 | 1.1.6 | готовы Страница “Персоналии >> Фильмы” | milestone | 0d | 2011-11-01 12:00 | 2011-11-01 12:00 | 32 |  |  | 63.5d |  |  |  |  |  |  |  |  |
| 9 | 1.1.7 | Страницы “Фильмы >> Тексты” и “ Персоналии >> Тексты” | milestone | 0d | 2011-11-04 17:00 | 2011-11-04 17:00 | 36 |  |  | 60d |  |  |  |  |  |  |  |  |
| 10 | 1.1.8 | готов поиск | milestone | 0d | 2011-11-22 12:00 | 2011-11-22 12:00 | 45 |  |  | 48.5d |  |  |  |  |  |  |  |  |
| 11 | 1.1.9 | готовы изменения Look & Feel | milestone | 0d | 2011-11-16 17:00 | 2011-11-16 17:00 | 53 |  |  | 52d |  |  |  |  |  |  |  |  |
| 12 | 1.1.10 | готовы добавления новой функциональности сайта | milestone | 0d | 2011-11-23 17:00 | 2011-11-23 17:00 | 69 |  |  | 47d |  |  |  |  |  |  |  |  |
| 13 | 1.1.11 | все опции работают - начало этапа стабилизации | milestone | 0d | 2011-11-21 08:00 | 2011-11-21 08:00 |  |  |  | 0d |  | must start on 2011-11-21 08:00 |  |  |  |  |  |  |
| 14 | 1.1.12 | версия ресурса запущена в эксплуатацию с оговоренным набором опций | milestone | 0d | 2011-12-01 08:00 | 2011-12-01 08:00 |  |  |  | 0d |  | must start on 2011-12-01 08:00 |  |  |  |  |  |  |
| 15 | 1.2 | **работы с релизом в декабре** |  | 41d | 2011-10-03 08:00 A | 2011-11-28 17:00 |  | 4% | 39.36d | 3d |  |  | 2011-12-01 17:00 |  | 500h | 20h | 58,560 | 4,800 |
| 16 | 1.2.1 | **работа с окружением** |  | 40d | 2011-10-04 08:00 A | 2011-11-28 17:00 |  | 50% | 20d | 0d |  |  |  |  | 16h | 8h | 3,840 | 1,920 |
| 17 | 1.2.1.1 | **подготовка отдельного BETA-окружения для разработки** |  | 1d | 2011-10-04 08:00 A | 2011-10-04 17:00 A |  | 100% |  |  |  |  |  |  | 8h | 8h | 1,920 | 1,920 |
| 18 | 1.2.1.1.1 | копирование базы данных |  | 0.5d | 2011-10-04 08:00 A | 2011-10-04 12:00 A | 3 | 100% |  |  |  | start no earlier than 2011-10-03 08:00 |  | Стас | 4h | 4h | 960 | 960 |
| 19 | 1.2.1.1.2 | копирование движка и контента |  | 0.5d | 2011-10-04 13:00 A | 2011-10-04 17:00 A | 18 | 100% |  |  |  |  |  | Стас | 4h | 4h | 960 | 960 |
| 20 | 1.2.1.2 | паренос BETA версии на основной хостинг |  | 1d | 2011-11-28 08:00 | 2011-11-28 17:00 |  |  |  | 0d |  | must start on 2011-11-28 08:00 |  | Стас | 8h |  | 1,920 |  |
| 21 | 1.2.2 | **доработки в панели управления** |  | 20d | 2011-10-10 08:00 A | 2011-11-04 17:00 | 17 | 11% | 17.86d | 19d |  |  |  |  | 112h | 12h | 26,880 | 2,880 |
| 22 | 1.2.2.1 | admin :: таблица статуса контента |  | 3d | 2011-10-10 08:00 A | 2011-10-17 17:00 |  | 50% | 1.5d | 0d |  | must start on 2011-10-10 08:00 |  | Стас | 24h | 12h | 5,760 | 2,880 |
| 23 | 1.2.2.2 | **Списки “Фильмы” и “ Персоналии”** |  | 4d | 2011-10-18 08:00 | 2011-10-21 17:00 | 22 |  |  | 22d | 0d |  |  |  | 32h |  | 7,680 |  |
| 24 | 1.2.2.2.1 | Списки “Фильмы” и “ Персоналии” :: выбор записи |  | 2d | 2011-10-18 08:00 | 2011-10-19 17:00 | 22 |  |  | 22d | 0d |  |  | Стас | 16h |  | 3,840 |  |
| 25 | 1.2.2.2.2 | Списки “Фильмы” и “ Персоналии” :: удаление и пометка записи | milestone | 0d | 2011-10-19 17:00 | 2011-10-19 17:00 | 24 |  |  | 22d | 0d |  |  | Стас |  |  |  |  |
| 26 | 1.2.2.2.3 | Списки “Фильмы” и “ Персоналии” :: обновление списка, добавление записи |  | 2d | 2011-10-20 08:00 | 2011-10-21 17:00 | 25 |  |  | 22d | 3d |  |  | Стас | 16h |  | 3,840 |  |

Notes:
- 24: Запись (фильм или персона) выбирается из выпадающего списка с подстановкой
- 25: В списке можно удалять и отмечать отображаемые на сайте записи.
- 26: Обновление списка и добавление записи происходит без перезагрузки страницы.

| ID | WBS | Task | Type | Duration | Start | Finish | Predecessors | Total slack | Free slack | Resources | Work | Cost |
| --- | --- | --- | --- | --- | --- | --- | --- | --- | --- | --- | --- | --- |
| 27 | 1.2.2.3 | **Страница “Фильмы >> Персоны”** |  | 2d | 2011-10-27 08:00 | 2011-10-28 17:00 |  | 19d | 0d |  | 16h | 3,840 |
| 28 | 1.2.2.3.1 | Страница “Фильмы >> Персоны” :: набор записей |  | 0.5d | 2011-10-27 08:00 | 2011-10-27 12:00 | 26 | 19d | 0d | Стас | 4h | 960 |
| 29 | 1.2.2.3.2 | Страница “Фильмы >> Персоны” :: выбор персоны |  | 0.5d | 2011-10-27 13:00 | 2011-10-27 17:00 | 28 | 19d | 0d | Стас | 4h | 960 |
| 30 | 1.2.2.3.3 | Страница “Фильмы >> Персоны” :: drag’n’drop |  | 0.5d | 2011-10-28 08:00 | 2011-10-28 12:00 | 29 | 19d | 0d | Стас | 4h | 960 |
| 31 | 1.2.2.3.4 | Страница “Фильмы >> Персоны” :: изменение записей |  | 0.5d | 2011-10-28 13:00 | 2011-10-28 17:00 | 30 | 19d | 0d | Стас | 4h | 960 |
| 32 | 1.2.2.4 | **Страница “Персоналии >> Фильмы”** |  | 1.5d | 2011-10-31 08:00 | 2011-11-01 12:00 |  | 19d | 0d |  | 12h | 2,880 |
| 33 | 1.2.2.4.1 | Страница “Персоналии >> Фильмы” :: Название фильма |  | 0.5d | 2011-10-31 08:00 | 2011-10-31 12:00 | 31 | 19d | 0d | Стас | 4h | 960 |
| 34 | 1.2.2.4.2 | Страница “Персоналии >> Фильмы” :: drag’n’drop |  | 0.5d | 2011-10-31 13:00 | 2011-10-31 17:00 | 33 | 19d | 0d | Стас | 4h | 960 |
| 35 | 1.2.2.4.3 | Страница “Персоналии >> Фильмы” :: изменение записей |  | 0.5d | 2011-11-01 08:00 | 2011-11-01 12:00 | 34 | 19d | 0d | Стас | 4h | 960 |
| 36 | 1.2.2.5 | **Страницы “Фильмы >> Тексты” и “ Персоналии >> Тексты”** |  | 3.5d | 2011-11-01 13:00 | 2011-11-04 17:00 |  | 19d | 0d |  | 28h | 6,720 |
| 37 | 1.2.2.5.1 | Страницы “Фильмы >> Тексты” и “ Персоналии >> Тексты” :: поля записи |  | 0.5d | 2011-11-01 13:00 | 2011-11-01 17:00 | 35 | 19d | 0d | Стас | 4h | 960 |
| 38 | 1.2.2.5.2 | Страницы “Фильмы >> Тексты” и “ Персоналии >> Тексты” :: категории записи |  | 0.5d | 2011-11-02 08:00 | 2011-11-02 12:00 | 37 | 19d | 0d | Стас | 4h | 960 |
| 39 | 1.2.2.5.3 | Страницы “Фильмы >> Тексты” и “ Персоналии >> Тексты” :: преобразование текстов |  | 0.5d | 2011-11-02 13:00 | 2011-11-02 17:00 | 38 | 19d | 0d | Стас | 4h | 960 |
| 40 | 1.2.2.5.4 | Страницы “Фильмы >> Тексты” и “ Персоналии >> Тексты” :: визуальный редактор |  | 0.5d | 2011-11-03 08:00 | 2011-11-03 12:00 | 39 | 19d | 0d | Стас | 4h | 960 |
| 41 | 1.2.2.5.5 | Страницы “Фильмы >> Тексты” и “ Персоналии >> Тексты” :: drag’n’drop |  | 0.5d | 2011-11-03 13:00 | 2011-11-03 17:00 | 40 | 19d | 0d | Стас | 4h | 960 |
| 42 | 1.2.2.5.6 | Страницы “Фильмы >> Тексты” и “ Персоналии >> Тексты” :: свернутое/развернутое состояние записи |  | 0.5d | 2011-11-04 08:00 | 2011-11-04 12:00 | 41 | 19d | 0d | Стас | 4h | 960 |
| 43 | 1.2.2.5.7 | Страницы “Фильмы >> Тексты” и “ Персоналии >> Тексты” :: изменение записей |  | 0.5d | 2011-11-04 13:00 | 2011-11-04 17:00 | 42 | 19d |  | Стас | 4h | 960 |
| 44 | 1.2.3 | **доработки сайта** |  | 38d | 2011-10-03 08:00 | 2011-11-23 17:00 |  | 6d |  |  | 372h | 27,840 |
| 45 | 1.2.3.1 | **доработки поиска** |  | 3.5d | 2011-11-16 17:00 | 2011-11-22 12:00 | 62 | 7.5d | 0d |  | 28h | 6,720 |
| 46 | 1.2.3.1.1 | поиск :: поле ввода поискового запроса :: расположение | milestone | 0d | 2011-11-16 17:00 | 2011-11-16 17:00 |  | 7.5d | 0d | Стас |  |  |
| 47 | 1.2.3.1.2 | поиск :: поле ввода поискового запроса :: выпадающий список |  | 0.5d | 2011-11-17 08:00 | 2011-11-17 12:00 | 46 | 7.5d | 0d | Стас | 4h | 960 |
| 48 | 1.2.3.1.3 | поиск :: результат поискового запроса :: источники данных |  | 0.5d | 2011-11-17 13:00 | 2011-11-17 17:00 | 47 | 7.5d | 0d | Стас | 4h | 960 |
| 49 | 1.2.3.1.4 | поиск :: результат поискового запроса :: поисковая фраза |  | 0.5d | 2011-11-18 08:00 | 2011-11-18 12:00 | 48 | 7.5d | 0d | Стас | 4h | 960 |
| 50 | 1.2.3.1.5 | поиск :: результат поискового запроса :: сортировка и вес |  | 0.5d | 2011-11-18 13:00 | 2011-11-18 17:00 | 49 | 7.5d | 0d | Стас | 4h | 960 |
| 51 | 1.2.3.1.6 | поиск :: результат поискового запроса :: сортировка блоков |  | 0.5d | 2011-11-21 08:00 | 2011-11-21 12:00 | 50 | 7.5d | 0d | Стас | 4h | 960 |
| 52 | 1.2.3.1.7 | поиск :: результат поискового запроса :: порционный вывод результатов |  | 1d | 2011-11-21 13:00 | 2011-11-22 12:00 | 51 | 7.5d |  | Стас | 8h | 1,920 |

Notes:
- 28: На странице присутствует исходный набор записей (режиссер, сценарист, и т.д.), остальные свободно добавляются, удаляются и перемещаются.
- 29: Имя персоны выбирается из выпадающего списка с подстановкой.
- 30: Перемещение записей в списке осуществляется перетаскиванием мышкой (dragndrop).
- 31: Добавление, удаление, перемещение и редактирование записей происходит без перезагрузки страницы.
- 33: Название фильма выбирается из выпадающего списка с подстановкой.
- 34: Перемещение записей в списке осуществляется перетаскиванием мышкой (dragndrop).
- 35: Добавление, удаление, перемещение и редактирование записей происходит без перезагрузки страницы.

| ID | WBS | Task | Type | Duration | Start | Finish | Predecessors | Total slack | Free slack | Constraint | Resources | Work | Cost |
| --- | --- | --- | --- | --- | --- | --- | --- | --- | --- | --- | --- | --- | --- |
| 53 | 1.2.3.2 | **изменение Look & Feel** |  | 33d | 2011-10-03 08:00 | 2011-11-16 17:00 |  | 6d | 0d |  |  | 304h | 11,520 |
| 54 | 1.2.3.2.1 | обсуждение дизайна |  | 8d | 2011-10-03 08:00 | 2011-10-12 17:00 |  | 21d | 0d | start no earlier than 2011-10-03 08:00 | Илья | 64h |  |
| 55 | 1.2.3.2.2 | **подготовка экранов** |  | 24d | 2011-10-13 08:00 | 2011-11-15 17:00 | 54 | 6d |  |  |  | 192h |  |
| 56 | 1.2.3.2.2.1 | Экран 1 |  | 4d | 2011-10-13 08:00 | 2011-10-18 17:00 |  | 21d | 12.5d |  | Илья | 32h |  |
| 57 | 1.2.3.2.2.2 | Экран 2 |  | 4d | 2011-10-19 08:00 | 2011-10-24 17:00 |  | 18d | 10.5d |  | Илья | 32h |  |
| 58 | 1.2.3.2.2.3 | Экран 3 |  | 4d | 2011-10-25 08:00 | 2011-10-28 17:00 |  | 15d | 7.5d |  | Илья | 32h |  |
| 59 | 1.2.3.2.2.4 | Экран 4 |  | 4d | 2011-10-31 08:00 | 2011-11-03 17:00 |  | 12d | 4.5d |  | Илья | 32h |  |
| 60 | 1.2.3.2.2.5 | Экран 5 |  | 4d | 2011-11-04 08:00 | 2011-11-09 17:00 |  | 9d | 1.5d |  | Илья | 32h |  |
| 61 | 1.2.3.2.2.6 | Экран 6 |  | 4d | 2011-11-10 08:00 | 2011-11-15 17:00 |  | 6d | 0d |  | Илья | 32h |  |
| 62 | 1.2.3.2.3 | **внедрение экранов в BETA версию** |  | 21d | 2011-10-19 08:00 | 2011-11-16 17:00 |  | 6d | 0d |  |  | 48h | 11,520 |
| 63 | 1.2.3.2.3.1 | Экран 1 |  | 1d | 2011-10-19 08:00 | 2011-10-19 17:00 | 56 | 21d | 5d |  | Стас | 8h | 1,920 |
| 64 | 1.2.3.2.3.2 | Экран 2 |  | 1d | 2011-10-27 08:00 | 2011-10-27 17:00 | 57, 63 | 16d | 1d |  | Стас | 8h | 1,920 |
| 65 | 1.2.3.2.3.3 | Экран 3 |  | 1d | 2011-10-31 08:00 | 2011-10-31 17:00 | 58, 64 | 15d | 3d |  | Стас | 8h | 1,920 |
| 66 | 1.2.3.2.3.4 | Экран 4 |  | 1d | 2011-11-04 08:00 | 2011-11-04 17:00 | 59, 65 | 12d | 3d |  | Стас | 8h | 1,920 |
| 67 | 1.2.3.2.3.5 | Экран 5 |  | 1d | 2011-11-10 08:00 | 2011-11-10 17:00 | 60, 66 | 9d | 3d |  | Стас | 8h | 1,920 |
| 68 | 1.2.3.2.3.6 | Экран 6 |  | 1d | 2011-11-16 08:00 | 2011-11-16 17:00 | 61, 67 | 6d |  |  | Стас | 8h | 1,920 |
| 69 | 1.2.3.3 | **добавление новой функциональности сайта** |  | 5d | 2011-11-17 08:00 | 2011-11-23 17:00 | 62 | 6d | 0d |  |  | 40h | 9,600 |
| 70 | 1.2.3.3.1 | Тексты :: добавить структуру |  | 3d | 2011-11-17 08:00 | 2011-11-21 17:00 |  | 6d | 0d |  | Стас | 24h | 5,760 |
| 71 | 1.2.3.3.2 | осмысленное содержание адресной строки |  | 1d | 2011-11-22 08:00 | 2011-11-22 17:00 | 70 | 6d | 0d |  | Стас | 8h | 1,920 |
| 72 | 1.2.3.3.3 | заголовок страницы не меняется при переходе от страницы к странице |  | 1d | 2011-11-23 08:00 | 2011-11-23 17:00 | 71 | 6d |  |  | Стас | 8h | 1,920 |
| 73 | 1.3 | **postponed / out of scope** |  | 20d | 2012-01-02 08:00 | 2012-01-27 17:00 |  | 0d |  |  |  | 160h | 38,400 |
| 74 | 1.3.1 | новый релиз | milestone | 0d | 2012-01-02 08:00 | 2012-01-02 08:00 |  | 0d |  | must start on 2012-01-02 08:00 |  |  |  |
| 75 | 1.3.2 | Персоналии/Фильмы - Фото галерея :: новый формат |  | 3d | 2012-01-02 08:00 | 2012-01-04 17:00 | 74 | 0d |  |  | Стас | 24h | 5,760 |
| 76 | 1.3.3 | Связь Фестивалей и Фильмов |  | 3d | 2012-01-05 08:00 | 2012-01-09 17:00 | 75 | 0d |  |  | Стас | 24h | 5,760 |
| 77 | 1.3.4 | Лица Отечественного Кино |  | 10d | 2012-01-10 08:00 | 2012-01-23 17:00 | 76, 74 | 0d |  |  | Стас | 80h | 19,200 |
| 78 | 1.3.5 | логическая ошибка в меню |  | 4d | 2012-01-24 08:00 | 2012-01-27 17:00 | 77 | 0d |  |  | Стас | 32h | 7,680 |

| ID | WBS | Task | Duration | Start | Finish | Total slack | Constraint |
| --- | --- | --- | --- | --- | --- | --- | --- |
| 79 | 1.4 | **недоступность ресурсов** | 3d | 2011-10-31 08:00 | 2011-11-02 17:00 | 0d |  |
| 80 | 1.4.1 | Стас - Мадрид | 3d | 2011-10-31 08:00 | 2011-11-02 17:00 | 0d | must start on 2011-10-31 08:00 |
